# Software Development

Schedule from MS Project XML, 2018-10-25 to 2019-03-07.

## Calendars

- Standard: Mon-Fri 08:00-12:00, 13:00-17:00; Sat-Sun off.

## Resources

| Resource |
| --- |
| Management |
| Project Manager |
| Analyst |
| Developer |
| Testers |
| Trainers |
| Technical Communicators |
| Deployment Team |

## Schedule

| ID | WBS | Task | Type | Duration | Start | Finish | Predecessors | Total slack | Resources | Work |
| --- | --- | --- | --- | --- | --- | --- | --- | --- | --- | --- |
| 1 | 1 | **Scope** |  | 3.5d | 2018-10-25 | 2018-10-30 |  | 0d |  | 28h |
| 2 | 1.1 | Determine project scope |  | 4h | 2018-10-25 | 2018-10-25 |  | 0d | Management | 4h |
| 3 | 1.2 | Secure project sponsorship |  | 1d | 2018-10-25 | 2018-10-26 | 2 | 0d | Management | 8h |
| 4 | 1.3 | Define preliminary resources |  | 1d | 2018-10-26 | 2018-10-29 | 3 | 0d | Project Manager | 8h |
| 5 | 1.4 | Secure core resources |  | 1d | 2018-10-29 | 2018-10-30 | 4 | 0d | Project Manager | 8h |
| 6 | 1.5 | Scope complete | milestone | 0d | 2018-10-30 | 2018-10-30 | 5 | 0d |  |  |
| 7 | 2 | **Analysis/Software Requirements** |  | 14d | 2018-10-30 | 2018-11-19 |  | 0d |  | 120h |
| 8 | 2.1 | Conduct needs analysis |  | 5d | 2018-10-30 | 2018-11-06 | 6 | 0d | Analyst | 40h |
| 9 | 2.2 | Draft preliminary software specifications |  | 3d | 2018-11-06 | 2018-11-09 | 8 | 0d | Analyst | 24h |
| 10 | 2.3 | Develop preliminary budget |  | 2d | 2018-11-09 | 2018-11-13 | 9 | 0d | Project Manager | 16h |
| 11 | 2.4 | Review software specifications/budget with team |  | 4h | 2018-11-13 | 2018-11-13 | 10 | 0d | Project Manager; Analyst | 8h |
| 12 | 2.5 | Incorporate feedback on software specifications |  | 1d | 2018-11-14 | 2018-11-14 | 11 | 0d | Analyst | 8h |
| 13 | 2.6 | Develop delivery timeline |  | 1d | 2018-11-15 | 2018-11-15 | 12 | 0d | Project Manager | 8h |
| 14 | 2.7 | Obtain approvals to proceed (concept, timeline, budget) |  | 4h | 2018-11-16 | 2018-11-16 | 13 | 0d | Management; Project Manager | 8h |
| 15 | 2.8 | Secure required resources |  | 1d | 2018-11-16 | 2018-11-19 | 14 | 0d | Project Manager | 8h |
| 16 | 2.9 | Analysis complete | milestone | 0d | 2018-11-19 | 2018-11-19 | 15 | 0d |  |  |
| 17 | 3 | **Design** |  | 14.5d | 2018-11-19 | 2018-12-07 |  | 0d |  | 120h |
| 18 | 3.1 | Review preliminary software specifications |  | 2d | 2018-11-19 | 2018-11-21 | 16 | 0d | Analyst | 16h |
| 19 | 3.2 | Develop functional specifications |  | 5d | 2018-11-21 | 2018-11-28 | 18 | 0d | Analyst | 40h |
| 20 | 3.3 | Develop prototype based on functional specifications |  | 4d | 2018-11-28 | 2018-12-04 | 19 | 0d | Analyst | 32h |
| 21 | 3.4 | Review functional specifications |  | 2d | 2018-12-04 | 2018-12-06 | 20 | 0d | Management | 16h |
| 22 | 3.5 | Incorporate feedback into functional specifications |  | 1d | 2018-12-06 | 2018-12-07 | 21 | 0d | Management | 8h |
| 23 | 3.6 | Obtain approval to proceed |  | 4h | 2018-12-07 | 2018-12-07 | 22 | 0d | Management; Project Manager | 8h |
| 24 | 3.7 | Design complete | milestone | 0d | 2018-12-07 | 2018-12-07 | 23 | 0d |  |  |

| ID | WBS | Task | Type | Duration | Start | Finish | Predecessors | Total slack | Free slack | Resources | Work |
| --- | --- | --- | --- | --- | --- | --- | --- | --- | --- | --- | --- |
| 25 | 4 | **Development** |  | 21.75d | 2018-12-10 | 2019-01-08 |  | 0d |  |  | 264h |
| 26 | 4.1 | Review functional specifications |  | 1d | 2018-12-10 | 2018-12-10 | 24 | 0d |  | Developer | 8h |
| 27 | 4.2 | Identify modular/tiered design parameters |  | 1d | 2018-12-11 | 2018-12-11 | 26 | 0d |  | Developer | 8h |
| 28 | 4.3 | Assign development staff |  | 1d | 2018-12-12 | 2018-12-12 | 27 | 0d |  | Developer | 8h |
| 29 | 4.4 | Develop code |  | 15d | 2018-12-13 | 2019-01-02 | 28 | 0d |  | Developer | 120h |
| 30 | 4.5 | Developer testing (primary debugging) |  | 15d | 2018-12-18 | 2019-01-08 | 29FS-7.5% | 0d |  | Developer | 120h |
| 31 | 4.6 | Development complete | milestone | 0d | 2019-01-08 | 2019-01-08 | 30 | 0d |  |  |  |
| 32 | 5 | **Testing** |  | 48.75d | 2018-12-10 | 2019-02-14 |  | 15d |  |  | 280h |
| 33 | 5.1 | Develop unit test plans using product specifications |  | 4d | 2018-12-10 | 2018-12-13 | 24 | 17.75d |  | Testers | 32h |
| 34 | 5.2 | Develop integration test plans using product specifications |  | 4d | 2018-12-10 | 2018-12-13 | 24 | 59.75d |  | Testers | 32h |
| 35 | 5.3 | **Unit Testing** |  | 15d | 2019-01-08 | 2019-01-29 |  | 0d |  |  | 120h |
| 36 | 5.3.1 | Review modular code |  | 5d | 2019-01-08 | 2019-01-15 | 33, 31 | 0d |  | Testers | 40h |
| 37 | 5.3.2 | Test component modules to product specifications |  | 2d | 2019-01-15 | 2019-01-17 | 31, 36 | 0d |  | Testers | 16h |
| 38 | 5.3.3 | Identify anomalies to product specifications |  | 3d | 2019-01-17 | 2019-01-22 | 37 | 0d |  | Testers | 24h |
| 39 | 5.3.4 | Modify code |  | 3d | 2019-01-22 | 2019-01-25 | 38 | 0d |  | Testers | 24h |
| 40 | 5.3.5 | Re-test modified code |  | 2d | 2019-01-25 | 2019-01-29 | 39 | 0d |  | Testers | 16h |
| 41 | 5.3.6 | Unit testing complete | milestone | 0d | 2019-01-29 | 2019-01-29 | 40 | 0d |  |  |  |
| 42 | 5.4 | **Integration Testing** |  | 12d | 2019-01-29 | 2019-02-14 |  | 0d |  |  | 96h |
| 43 | 5.4.1 | Test module integration |  | 5d | 2019-01-29 | 2019-02-05 | 41 | 0d |  | Testers | 40h |
| 44 | 5.4.2 | Identify anomalies to specifications |  | 2d | 2019-02-05 | 2019-02-07 | 43 | 0d |  | Testers | 16h |
| 45 | 5.4.3 | Modify code |  | 3d | 2019-02-07 | 2019-02-12 | 44 | 0d |  | Testers | 24h |
| 46 | 5.4.4 | Re-test modified code |  | 2d | 2019-02-12 | 2019-02-14 | 45 | 0d |  | Testers | 16h |
| 47 | 5.4.5 | Integration testing complete | milestone | 0d | 2019-02-14 | 2019-02-14 | 46 | 0d |  |  |  |
| 48 | 6 | **Training** |  | 45.75d | 2018-12-10 | 2019-02-11 |  | 3d |  |  | 256h |
| 49 | 6.1 | Develop training specifications for end users |  | 3d | 2018-12-10 | 2018-12-12 | 24 | 21.75d | 18.75d | Trainers | 24h |
| 50 | 6.2 | Develop training specifications for helpdesk support staff |  | 3d | 2018-12-10 | 2018-12-12 | 24 | 21.75d | 18.75d | Trainers | 24h |
| 51 | 6.3 | Identify training delivery methodology (computer based training, classroom, etc.) |  | 2d | 2018-12-10 | 2018-12-11 | 24 | 22.75d | 19.75d | Trainers | 16h |
| 52 | 6.4 | Develop training materials |  | 3w | 2019-01-08 | 2019-01-29 | 49, 31, 50, 51 | 3d | 0d | Trainers | 120h |
| 53 | 6.5 | Conduct training usability study |  | 4d | 2019-01-29 | 2019-02-04 | 52 | 3d | 0d | Trainers | 32h |
| 54 | 6.6 | Finalize training materials |  | 3d | 2019-02-04 | 2019-02-07 | 53 | 3d | 0d | Trainers | 24h |
| 55 | 6.7 | Develop training delivery mechanism |  | 2d | 2019-02-07 | 2019-02-11 | 54 | 3d | 0d | Trainers | 16h |
| 56 | 6.8 | Training materials complete | milestone | 0d | 2019-02-11 | 2019-02-11 | 55 | 3d |  |  |  |

| ID | WBS | Task | Type | Duration | Start | Finish | Predecessors | Total slack | Free slack | Resources | Work |
| --- | --- | --- | --- | --- | --- | --- | --- | --- | --- | --- | --- |
| 57 | 7 | **Documentation** |  | 30.5d | 2018-12-10 | 2019-01-21 |  | 18.25d |  |  | 336h |
| 58 | 7.1 | Develop Help specification |  | 1d | 2018-12-10 | 2018-12-10 | 24 | 27.75d | 9.5d | Technical Communicators | 8h |
| 59 | 7.2 | Develop Help system |  | 3w | 2018-12-24 | 2019-01-14 | 58, 29FS-5% | 18.25d | 0d | Technical Communicators | 120h |
| 60 | 7.3 | Review Help documentation |  | 3d | 2019-01-14 | 2019-01-17 | 59 | 18.25d | 0d | Technical Communicators | 24h |
| 61 | 7.4 | Incorporate Help documentation feedback |  | 2d | 2019-01-17 | 2019-01-21 | 60 | 18.25d | 0d | Technical Communicators | 16h |
| 62 | 7.5 | Develop user manuals specifications |  | 2d | 2018-12-10 | 2018-12-11 | 24 | 27.75d | 8.5d | Technical Communicators | 16h |
| 63 | 7.6 | Develop user manuals |  | 3w | 2018-12-24 | 2019-01-14 | 62, 29FS-5% | 19.25d | 0d | Technical Communicators | 120h |
| 64 | 7.7 | Review all user documentation |  | 2d | 2019-01-14 | 2019-01-16 | 63 | 19.25d | 0d | Technical Communicators | 16h |
| 65 | 7.8 | Incorporate user documentation feedback |  | 2d | 2019-01-16 | 2019-01-18 | 64 | 19.25d | 1d | Technical Communicators | 16h |
| 66 | 7.9 | Documentation complete | milestone | 0d | 2019-01-21 | 2019-01-21 | 65, 61 | 18.25d |  |  |  |
| 67 | 8 | **Pilot** |  | 70.25d | 2018-11-19 | 2019-02-25 |  | 0d |  |  | 64h |
| 68 | 8.1 | Identify test group |  | 1d | 2018-11-19 | 2018-11-20 | 16 | 61.25d | 0d | Project Manager | 8h |
| 69 | 8.2 | Develop software delivery mechanism |  | 1d | 2018-11-20 | 2018-11-21 | 68 | 61.25d |  |  |  |
| 70 | 8.3 | Install/deploy software |  | 1d | 2019-02-14 | 2019-02-15 | 47, 69, 66, 56 | 0d |  | Deployment Team | 8h |
| 71 | 8.4 | Obtain user feedback |  | 1w | 2019-02-15 | 2019-02-22 | 70 | 0d |  | Deployment Team | 40h |
| 72 | 8.5 | Evaluate testing information |  | 1d | 2019-02-22 | 2019-02-25 | 71 | 0d |  | Deployment Team | 8h |
| 73 | 8.6 | Pilot complete | milestone | 0d | 2019-02-25 | 2019-02-25 | 72 | 0d |  |  |  |
| 74 | 9 | **Deployment** |  | 5d | 2019-02-25 | 2019-03-04 |  | 0d |  |  | 40h |
| 75 | 9.1 | Determine final deployment strategy |  | 1d | 2019-02-25 | 2019-02-26 | 73 | 0d |  | Deployment Team | 8h |
| 76 | 9.2 | Develop deployment methodology |  | 1d | 2019-02-26 | 2019-02-27 | 75 | 0d |  | Deployment Team | 8h |
| 77 | 9.3 | Secure deployment resources |  | 1d | 2019-02-27 | 2019-02-28 | 76 | 0d |  | Deployment Team | 8h |
| 78 | 9.4 | Train support staff |  | 1d | 2019-02-28 | 2019-03-01 | 77 | 0d |  | Deployment Team | 8h |
| 79 | 9.5 | Deploy software |  | 1d | 2019-03-01 | 2019-03-04 | 78 | 0d |  | Deployment Team | 8h |
| 80 | 9.6 | Deployment complete | milestone | 0d | 2019-03-04 | 2019-03-04 | 79 | 0d |  |  |  |

| ID | WBS | Task | Type | Duration | Start | Finish | Predecessors | Total slack | Resources | Work |
| --- | --- | --- | --- | --- | --- | --- | --- | --- | --- | --- |
| 81 | 10 | **Post Implementation Review** |  | 3d | 2019-03-04 | 2019-03-07 |  | 0d |  | 24h |
| 82 | 10.1 | Document lessons learned |  | 1d | 2019-03-04 | 2019-03-05 | 80 | 0d | Project Manager | 8h |
| 83 | 10.2 | Distribute to team members |  | 1d | 2019-03-05 | 2019-03-06 | 82 | 0d | Project Manager | 8h |
| 84 | 10.3 | Create software maintenance team |  | 1d | 2019-03-06 | 2019-03-07 | 83 | 0d | Project Manager | 8h |
| 85 | 10.4 | Post implementation review complete | milestone | 0d | 2019-03-07 | 2019-03-07 | 84 | 0d |  |  |
| 86 | 11 | Software development template complete | milestone | 0d | 2019-03-07 | 2019-03-07 | 85 | 0d |  |  |
